# WBS_ANKAR (1)

Schedule from MS Project, 2017-05-08 to 2017-08-11.
Hewlett-Packard

## Calendars

- Estándar: Mon-Fri 09:00-13:00, 15:00-19:00; Sat-Sun off. Exceptions (off unless hours are given): 2017-05-15 (Día del maestro), 2017-06-19 (Día nacional del TSU), 2017-07-04 (Suspensión de labores), 2017-07-17 to 2017-07-28 (Vacaciones).

## Resources

| Resource |
| --- |
| Admin de proyecto_SBH |
| Admin de la configuración_SBH |
| Analista_SBH |
| Diseñador_LESV |
| Programador_LESV |
| Tester_LVA |
| Ing en V&V_LVA |
| Asegurador de la calidad_LVA |

## Schedule

| ID | WBS | Task | Duration | Start | Finish | Predecessors | Total slack | Free slack | Resources | Work |
| --- | --- | --- | --- | --- | --- | --- | --- | --- | --- | --- |
| 1 | 1 | **1. Plan Preliminar** | 2d | 2017-05-08 09:00 | 2017-05-09 19:00 |  |  |  |  | 48h |
| 2 | 1.1 | 1.1 Generar un WBS del Producto Inicial | 1d | 2017-05-08 09:00 | 2017-05-08 19:00 |  | 0.3d | 0d | Admin de la configuración_SBH; Asegurador de la calidad_LVA; Admin de proyecto_SBH | 24h |
| 3 | 1.2 | 1.2 Generar Project Charter | 0.3d | 2017-05-09 09:00 | 2017-05-09 11:24 | 2 | 0.3d | 0d | Admin de la configuración_SBH; Asegurador de la calidad_LVA; Admin de proyecto_SBH | 7.2h |
| 4 | 1.3 | 1.3 Plan de Proyecto Preliminar | 0.4d | 2017-05-09 11:24 | 2017-05-09 16:36 | 3 | 0.3d |  | Admin de la configuración_SBH; Asegurador de la calidad_LVA; Ing en V&V_LVA | 9.6h |
| 5 | 1.4 | 1.4 Generar Matriz de Responsabilidades | 0.3d | 2017-05-09 09:00 | 2017-05-09 11:24 | 2 | 0.7d |  | Admin de la configuración_SBH; Asegurador de la calidad_LVA; Admin de proyecto_SBH | 7.2h |
| 6 | 2 | **2. Sitio web ANKAR** | 55d | 2017-05-10 09:00 | 2017-08-11 19:00 | 1 |  |  |  | 635.2h |
| 7 | 2.1 | 2.1 Formación del Equipo de Desarrollo | 0.1d | 2017-05-10 09:00 | 2017-05-10 09:48 |  | 54.9d |  | Admin de proyecto_SBH | 0.8h |
| 8 | 2.2 | **2.2 Especificación de Requerimientos** | 7d | 2017-05-10 09:00 | 2017-05-19 19:00 |  |  |  |  | 85.2h |
| 9 | 2.2.1 | **2.2.1 Elicitación** | 3d | 2017-05-10 09:00 | 2017-05-12 19:00 |  |  |  |  | 28h |
| 10 | 2.2.1.1 | 2.2.1.1 Generar listas de proveedores | 0.5d | 2017-05-10 09:00 | 2017-05-10 13:00 |  | 3d | 0d | Analista_SBH; Admin de proyecto_SBH | 8h |
| 11 | 2.2.1.2 | 2.2.1.2 Evaluar los proveedores de requerimientos a entrevistar | 0.25d | 2017-05-10 15:00 | 2017-05-10 17:00 | 10 | 3d | 0d | Analista_SBH | 2h |
| 12 | 2.2.1.3 | 2.2.1.3 Definir la estrategia de recolección de requerimientos | 0.25d | 2017-05-10 17:00 | 2017-05-10 19:00 | 11 | 3d | 0d | Analista_SBH | 2h |
| 13 | 2.2.1.4 | 2.2.1.4 Planificar reuniones de elicitación de requerimientos | 0.25d | 2017-05-11 09:00 | 2017-05-11 11:00 | 12 | 3d | 0d | Analista_SBH | 2h |
| 14 | 2.2.1.5 | 2.2.1.5 Identificar los procesos del sistema | 1d | 2017-05-11 11:00 | 2017-05-12 11:00 | 13 | 3d | 0d | Analista_SBH | 8h |
| 15 | 2.2.1.6 | 2.2.1.6 Identificar los requerimientos funcionales | 0.5d | 2017-05-12 11:00 | 2017-05-12 17:00 | 14 | 3d | 0d | Analista_SBH | 4h |
| 16 | 2.2.1.7 | 2.2.1.7 Indenticiar los requerimientos no funcionales | 0.25d | 2017-05-12 17:00 | 2017-05-12 19:00 | 15 | 3d |  | Analista_SBH | 2h |
| 17 | 2.2.2 | **2.2.2 Especificación** | 1d | 2017-05-16 09:00 | 2017-05-16 19:00 | 9 |  |  |  | 11.2h |
| 18 | 2.2.2.1 | 2.2.2.1 Describir los requerimientos | 0.3d | 2017-05-16 09:00 | 2017-05-16 11:24 |  | 3d | 0d | Analista_SBH | 2.4h |
| 19 | 2.2.2.2 | 2.2.2.2 Evaluar los requerimientos | 0.3d | 2017-05-16 11:24 | 2017-05-16 15:48 | 18 | 3d | 0d | Analista_SBH | 2.4h |
| 20 | 2.2.2.3 | 2.2.2.3 SRS | 0.4d | 2017-05-16 15:48 | 2017-05-16 19:00 | 19 | 3d |  | Admin de proyecto_SBH; Analista_SBH | 6.4h |
| 21 | 2.2.3 | **2.2.3 Gestión** | 2.5d | 2017-05-17 09:00 | 2017-05-19 13:00 | 17 |  |  |  | 32h |
| 22 | 2.2.3.1 | 2.2.3.1 Prioizar requerimientos | 0.5d | 2017-05-17 09:00 | 2017-05-17 13:00 |  | 3d | 0d | Analista_SBH | 4h |
| 23 | 2.2.3.2 | 2.2.3.2 Almacenar en repositorio | 0.25d | 2017-05-17 15:00 | 2017-05-17 17:00 | 22 | 3d | 0d | Admin de proyecto_SBH; Analista_SBH | 4h |
| 24 | 2.2.3.3 | 2.2.3.3 Asigar a desarrolladores de software | 0.5d | 2017-05-17 17:00 | 2017-05-18 11:00 | 23 | 3d | 0d | Admin de proyecto_SBH | 4h |
| 25 | 2.2.3.4 | 2.2.3.4 Administrar los cambios en los requerimientos | 0.5d | 2017-05-18 11:00 | 2017-05-18 17:00 | 24 | 3d | 0d | Admin de proyecto_SBH; Analista_SBH | 8h |
| 26 | 2.2.3.5 | 2.2.3.5 Administrar la trazabilidad de los requerimientos | 0.75d | 2017-05-18 17:00 | 2017-05-19 13:00 | 25 | 3d | 0d | Admin de proyecto_SBH; Analista_SBH | 12h |
| 27 | 2.2.4 | 2.2.4 Calificar V & V de requerimientos | 0.25d | 2017-05-19 15:00 | 2017-05-19 17:00 | 26 | 3d | 0d | Admin de la configuración_SBH; Admin de proyecto_SBH; Analista_SBH; Ing en V&V_LVA | 8h |
| 28 | 2.2.5 | 2.2.5 Hitos de especificación de requerimientos | 0.25d | 2017-05-19 17:00 | 2017-05-19 19:00 | 27 | 3d |  | Admin de la configuración_SBH; Admin de proyecto_SBH; Asegurador de la calidad_LVA | 6h |

| ID | WBS | Task | Duration | Start | Finish | Predecessors | Total slack | Free slack | Constraint | Resources | Work |
| --- | --- | --- | --- | --- | --- | --- | --- | --- | --- | --- | --- |
| 29 | 2.3 | **2.3 Planificación** | 11d | 2017-05-22 09:00 | 2017-06-05 19:00 | 8 |  |  |  |  | 196h |
| 30 | 2.3.1 | 2.3.1 Definición del ciclo de vida | 0.25d | 2017-05-22 09:00 | 2017-05-22 11:00 |  | 10.75d |  |  | Admin de proyecto_SBH; Analista_SBH | 4h |
| 31 | 2.3.2 | 2.3.2 Politicas del proyecto | 0.75d | 2017-05-22 09:00 | 2017-05-22 17:00 |  | 10.25d |  |  | Admin de la configuración_SBH; Admin de proyecto_SBH; Asegurador de la calidad_LVA | 18h |
| 32 | 2.3.3 | 2.3.3 Actualizar plan de proyecto | 2d | 2017-05-23 09:00 | 2017-05-24 19:00 |  | 45d |  | start no earlier than 2017-05-23 09:00 | Admin de proyecto_SBH; Admin de la configuración_SBH; Asegurador de la calidad_LVA | 48h |
| 33 | 2.3.4 | **2.3.4 Estimación** | 3d | 2017-05-25 09:00 | 2017-05-29 19:00 |  |  |  |  |  | 34h |
| 34 | 2.3.4.1 | 2.3.4.1 Actualizar WBS/Calendario | 0.5d | 2017-05-25 09:00 | 2017-05-25 13:00 |  | 6.75d |  |  | Admin de proyecto_SBH | 4h |
| 35 | 2.3.4.2 | 2.3.4.2 Diccionario del WBS | 1.25d | 2017-05-25 09:00 | 2017-05-26 11:00 |  | 4.75d | 0d |  | Admin de proyecto_SBH | 10h |
| 36 | 2.3.4.3 | 2.3.4.5 Costos | 1.25d | 2017-05-26 11:00 | 2017-05-29 13:00 | 35 | 4.75d |  |  | Admin de proyecto_SBH; Analista_SBH | 20h |
| 37 | 2.3.5 | **2.3.5 Riesgos** | 2.5d | 2017-05-30 09:00 | 2017-06-01 13:00 | 33 |  |  |  |  | 34h |
| 38 | 2.3.5.1 | 2.3.5.1 Identificación de riesgos | 0.75d | 2017-05-30 09:00 | 2017-05-30 17:00 |  | 4.25d |  |  | Admin de proyecto_SBH; Analista_SBH | 12h |
| 39 | 2.3.5.2 | 2.3.5.2 Asignación de prioridades | 0.75d | 2017-05-30 09:00 | 2017-05-30 17:00 |  | 4.25d |  |  | Admin de proyecto_SBH | 6h |
| 40 | 2.3.5.3 | 2.3.5.3 Plan de mitigación y contingencia | 1d | 2017-05-31 09:00 | 2017-05-31 19:00 |  | 40d |  | start no earlier than 2017-05-31 09:00 | Admin de proyecto_SBH; Analista_SBH | 16h |
| 41 | 2.3.6 | **2.3.6 Aseguramientos de la calidad** | 2.25d | 2017-06-01 09:00 | 2017-06-05 11:00 |  |  |  |  |  | 50h |
| 42 | 2.3.6.1 | 2.3.6.1 Plan de la gestion de la configuración | 2d | 2017-06-01 09:00 | 2017-06-02 19:00 |  | 0.5d | 0d |  | Admin de la configuración_SBH; Admin de proyecto_SBH; Asegurador de la calidad_LVA | 48h |
| 43 | 2.3.6.2 | 2.3.6.2 Junta de arranque de construcción | 0.25d | 2017-06-05 09:00 | 2017-06-05 11:00 | 42 | 0.5d | 0d |  | Admin de proyecto_SBH | 2h |
| 44 | 2.3.7 | 2.3.7 Hitos de especificación de requerimientos | 0.25d | 2017-06-05 11:00 | 2017-06-05 13:00 | 43 | 0.5d |  |  | Admin de la configuración_SBH; Admin de proyecto_SBH; Asegurador de la calidad_LVA; Ing en V&V_LVA | 8h |
| 45 | 2.4 | **2.4 Diseño Preliminar** | 14d | 2017-06-06 09:00 | 2017-06-26 19:00 | 29 |  |  |  |  | 134h |
| 46 | 2.4.1 | 2.4.1 Definición de la arquitectura | 0.25d | 2017-06-06 09:00 | 2017-06-06 11:00 |  | 14.25d |  |  | Diseñador_LESV; Admin de proyecto_SBH | 4h |
| 47 | 2.4.2 | **2.4.2 Diagramas UML** | 8d | 2017-06-06 09:00 | 2017-06-15 19:00 |  |  |  |  |  | 40h |
| 48 | 2.4.2.1 | 2.4.2.1 Diagrama de secuencia | 2d | 2017-06-06 09:00 | 2017-06-07 19:00 |  | 5.5d | 0d |  | Diseñador_LESV | 16h |
| 49 | 2.4.2.2 | 2.4.2.2 Diagrama de clases | 2d | 2017-06-08 09:00 | 2017-06-09 19:00 | 48 | 5.5d | 0d |  | Diseñador_LESV | 16h |
| 50 | 2.4.2.3 | 2.4.2.3 Diagrama de componentes | 0.5d | 2017-06-12 09:00 | 2017-06-12 13:00 | 49 | 5.5d |  |  | Diseñador_LESV | 4h |
| 51 | 2.4.2.4 | 2.4.2.4 Diagrama de despliegue | 0.5d | 2017-06-12 09:00 | 2017-06-12 13:00 |  | 32.5d |  | start no earlier than 2017-06-12 09:00 | Diseñador_LESV | 4h |
| 52 | 2.4.3 | 2.4.3 Mapa de navegación | 0.25d | 2017-06-13 09:00 | 2017-06-13 11:00 |  | 31.75d |  | start no earlier than 2017-06-13 09:00 | Diseñador_LESV | 2h |
| 53 | 2.4.4 | 2.4.4 Maquetación /Bocetos | 2.75d | 2017-06-13 09:00 | 2017-06-15 17:00 |  | 29.25d |  | start no earlier than 2017-06-13 09:00 | Diseñador_LESV | 22h |

| ID | WBS | Task | Duration | Start | Finish | Predecessors | Total slack | Free slack | Constraint | Resources | Work |
| --- | --- | --- | --- | --- | --- | --- | --- | --- | --- | --- | --- |
| 54 | 2.4.5 | **2.4.5 Base de datos** | 5d | 2017-06-16 09:00 | 2017-06-23 19:00 | 47 |  |  |  |  | 48h |
| 55 | 2.4.5.1 | 2.4.5.1 Diagrama E-R | 2d | 2017-06-16 09:00 | 2017-06-20 19:00 |  | 2d | 0d |  | Diseñador_LESV | 16h |
| 56 | 2.4.5.2 | 2.4.5.2 Diagrama relacional | 2d | 2017-06-21 09:00 | 2017-06-22 19:00 | 55 | 2d | 0d |  | Diseñador_LESV | 16h |
| 57 | 2.4.5.3 | 2.4.5.3 Diccionario de datos | 0.5d | 2017-06-23 09:00 | 2017-06-23 13:00 | 56 | 2d |  |  | Diseñador_LESV | 4h |
| 58 | 2.4.5.4 | 2.4.5.4 Verificación | 0.5d | 2017-06-23 09:00 | 2017-06-23 13:00 |  | 24.5d |  | start no earlier than 2017-06-23 09:00 | Admin de proyecto_SBH; Asegurador de la calidad_LVA; Ing en V&V_LVA | 12h |
| 59 | 2.4.6 | 2.4.6 Integracion de V&V | 0.5d | 2017-06-26 09:00 | 2017-06-26 13:00 |  | 23.5d |  | start no earlier than 2017-06-26 09:00 | Admin de proyecto_SBH; Ing en V&V_LVA | 8h |
| 60 | 2.4.7 | 2.4.7 Hitos del diseño peliminar | 0.25d | 2017-06-26 09:00 | 2017-06-26 11:00 |  | 23.75d |  | start no earlier than 2017-06-26 09:00 | Admin de proyecto_SBH; Diseñador_LESV; Ing en V&V_LVA; Admin de la configuración_SBH; Asegurador de la calidad_LVA | 10h |
| 61 | 2.5 | **2.5 Diseño detallado** | 3d | 2017-06-27 09:00 | 2017-06-29 19:00 | 45 |  |  |  |  | 32h |
| 62 | 2.5.1 | 2.5.1 Refinamiento del diseño | 2d | 2017-06-27 09:00 | 2017-06-28 19:00 |  | 0.5d | 0d |  | Diseñador_LESV | 16h |
| 63 | 2.5.2 | 2.5.2 Pruebas unitarias o de unidad | 0.75d | 2017-06-29 09:00 | 2017-06-29 17:00 | 62 | 0.5d |  |  | Tester_LVA | 6h |
| 64 | 2.5.3 | 2.5.3 Hitos del diseño detallado | 0.25d | 2017-06-29 09:00 | 2017-06-29 11:00 |  | 20.75d |  | start no earlier than 2017-06-29 09:00 | Diseñador_LESV; Admin de la configuración_SBH; Admin de proyecto_SBH; Asegurador de la calidad_LVA; Ing en V&V_LVA | 10h |
| 65 | 2.6 | **2.6 Codificación** | 15d | 2017-06-30 09:00 | 2017-08-04 19:00 | 61 |  |  |  |  | 120h |
| 66 | 2.6.1 | 2.6.1 Codificación de la base de datos | 1.75d | 2017-06-30 09:00 | 2017-07-03 17:00 |  | 0.25d |  |  | Programador_LESV | 14h |
| 67 | 2.6.2 | **2.6.2 Codificar FrontEnd** | 4d | 2017-07-05 09:00 | 2017-07-10 19:00 | 66 |  |  |  |  | 32h |
| 68 | 2.6.2.1 | **2.6.2.1 Pantalla de inicio** | 0.25d | 2017-07-05 09:00 | 2017-07-05 11:00 |  |  |  |  |  | 2h |
| 69 | 2.6.2.1.1 | 2.6.2.1.1 Vista/Interfaz | 0.25d | 2017-07-05 09:00 | 2017-07-05 11:00 |  | 3.75d |  |  | Programador_LESV | 2h |
| 70 | 2.6.2.2 | **2.6.2.2 Pantalla de conócenos** | 0.25d | 2017-07-05 09:00 | 2017-07-05 11:00 |  | 3.75d |  |  |  | 2h |
| 71 | 2.6.2.2.1 | 2.6.2.2.1 Vista/Interfaz | 0.25d | 2017-07-05 09:00 | 2017-07-05 11:00 |  | 3.75d |  |  | Programador_LESV | 2h |
| 72 | 2.6.2.3 | **2.6.2.3 Pantalla de novedades** | 0.5d | 2017-07-05 09:00 | 2017-07-05 13:00 |  | 3.5d |  |  |  | 4h |
| 73 | 2.6.2.3.1 | 2.6.2.3.1 Vista/Interfaz | 0.5d | 2017-07-05 09:00 | 2017-07-05 13:00 |  | 3.5d |  |  | Programador_LESV | 4h |
| 74 | 2.6.2.4 | **2.6.2.4 Pantalla de productos** | 1d | 2017-07-06 09:00 | 2017-07-06 19:00 |  | 2d |  |  |  | 8h |
| 75 | 2.6.2.4.1 | 2.6.2.4.1 Vista/Interfaz | 1d | 2017-07-06 09:00 | 2017-07-06 19:00 |  | 2d |  | start no earlier than 2017-07-06 09:00 | Programador_LESV | 8h |
| 76 | 2.6.2.5 | **2.6.2.5 Pantalla de login** | 0.25d | 2017-07-07 09:00 | 2017-07-07 11:00 |  | 1.75d |  |  |  | 2h |
| 77 | 2.6.2.5.1 | 2.6.2.5.1 Vista/Interfaz | 0.25d | 2017-07-07 09:00 | 2017-07-07 11:00 |  | 1.75d |  | start no earlier than 2017-07-07 09:00 | Programador_LESV | 2h |

| ID | WBS | Task | Duration | Start | Finish | Predecessors | Total slack | Free slack | Constraint | Resources | Work |
| --- | --- | --- | --- | --- | --- | --- | --- | --- | --- | --- | --- |
| 78 | 2.6.2.6 | **2.6.2.6 Pantalla de carrito de compras** | 1d | 2017-07-07 09:00 | 2017-07-07 19:00 |  | 1d |  |  |  | 8h |
| 79 | 2.6.2.6.1 | 2.6.2.6.1 Vista/Interfaz | 1d | 2017-07-07 09:00 | 2017-07-07 19:00 |  | 1d |  | start no earlier than 2017-07-07 09:00 | Programador_LESV | 8h |
| 80 | 2.6.2.7 | **2.6.2.7 Pantalla de comentarios** | 0.5d | 2017-07-10 09:00 | 2017-07-10 13:00 |  | 0.5d |  |  |  | 4h |
| 81 | 2.6.2.7.1 | 2.6.2.7.1 Vista/Interfaz | 0.5d | 2017-07-10 09:00 | 2017-07-10 13:00 |  | 0.5d |  | start no earlier than 2017-07-10 09:00 | Programador_LESV | 4h |
| 82 | 2.6.2.8 | **2.6.2.8 Pantalla de FAQ** | 0.25d | 2017-07-10 09:00 | 2017-07-10 11:00 |  | 0.75d |  |  |  | 2h |
| 83 | 2.6.2.8.1 | 2.6.2.8.1 Vista/Interfaz | 0.25d | 2017-07-10 09:00 | 2017-07-10 11:00 |  | 0.75d |  | start no earlier than 2017-07-10 09:00 | Programador_LESV | 2h |
| 84 | 2.6.3 | **2.6.3 Codificar BackEnd (Cpanel)** | 8d | 2017-07-11 09:00 | 2017-08-03 19:00 | 67 |  |  |  |  | 64h |
| 85 | 2.6.3.1 | **2.6.3.1 Módulo de usuarios** | 2d | 2017-07-11 09:00 | 2017-07-12 19:00 |  |  |  |  |  | 16h |
| 86 | 2.6.3.1.1 | 2.6.3.1.1 Clases de usuario | 1d | 2017-07-11 09:00 | 2017-07-11 19:00 |  | 4d | 0d |  | Programador_LESV | 8h |
| 87 | 2.6.3.1.2 | 2.6.3.1.2 Controlador | 0.75d | 2017-07-12 09:00 | 2017-07-12 17:00 | 86 | 4d | 0d |  | Programador_LESV | 6h |
| 88 | 2.6.3.1.3 | 2.6.3.1.3 Vista/Interfaz | 0.25d | 2017-07-12 17:00 | 2017-07-12 19:00 | 87 | 4d |  |  | Programador_LESV | 2h |
| 89 | 2.6.3.2 | **2.6.3.2 Módulo de novedades** | 1d | 2017-07-13 09:00 | 2017-07-13 19:00 |  |  |  |  |  | 8h |
| 90 | 2.6.3.2.1 | 2.6.3.2.1 Clases de novedades | 0.5d | 2017-07-13 09:00 | 2017-07-13 13:00 |  | 7d | 0d |  | Programador_LESV | 4h |
| 91 | 2.6.3.2.2 | 2.6.3.2.2 Controlador | 0.25d | 2017-07-13 15:00 | 2017-07-13 17:00 | 90 | 7d | 0d |  | Programador_LESV | 2h |
| 92 | 2.6.3.2.3 | 2.6.3.2.3 Vista/Interfaz | 0.25d | 2017-07-13 17:00 | 2017-07-13 19:00 | 91 | 7d |  |  | Programador_LESV | 2h |
| 93 | 2.6.3.3 | **2.6.3.3 Módulo de productos** | 3d | 2017-07-14 09:00 | 2017-08-01 19:00 | 85 |  |  |  |  | 24h |
| 94 | 2.6.3.3.1 | 2.6.3.3.1 Clases de producto | 1d | 2017-07-14 09:00 | 2017-07-14 19:00 |  | 3d | 0d |  | Programador_LESV | 8h |
| 95 | 2.6.3.3.2 | 2.6.3.3.2 Controlador | 1d | 2017-07-31 09:00 | 2017-07-31 19:00 | 94 | 3d | 0d |  | Programador_LESV | 8h |
| 96 | 2.6.3.3.3 | 2.6.3.3.3 Vista/Interfaz | 0.25d | 2017-08-01 09:00 | 2017-08-01 11:00 | 95 | 3d | 0d |  | Programador_LESV | 2h |
| 97 | 2.6.3.3.4 | 2.6.3.3.4 Reporte | 0.75d | 2017-08-01 11:00 | 2017-08-01 19:00 | 96 | 3d |  |  | Programador_LESV | 6h |
| 98 | 2.6.3.4 | **2.6.3.4 Módulo de compras** | 1d | 2017-08-02 09:00 | 2017-08-02 19:00 | 93 |  |  |  |  | 8h |
| 99 | 2.6.3.4.1 | 2.6.3.4.1 Controlador | 0.75d | 2017-08-02 09:00 | 2017-08-02 17:00 |  | 3d | 0d |  | Programador_LESV | 6h |
| 100 | 2.6.3.4.2 | 2.6.3.4.2 Vista/Interfaz | 0.25d | 2017-08-02 17:00 | 2017-08-02 19:00 | 99 | 3d |  |  | Programador_LESV | 2h |
| 101 | 2.6.3.5 | **2.6.3.5 Módulo de comentarios** | 0.5d | 2017-08-03 09:00 | 2017-08-03 13:00 |  |  |  |  |  | 4h |
| 102 | 2.6.3.5.1 | 2.6.3.5.1 Contrlador | 0.25d | 2017-08-03 09:00 | 2017-08-03 11:00 |  | 2.5d | 0d |  | Programador_LESV | 2h |
| 103 | 2.6.3.5.2 | 2.6.3.5.2 Vista/Interfaz | 0.25d | 2017-08-03 11:00 | 2017-08-03 13:00 | 102 | 2.5d |  |  | Programador_LESV | 2h |

| ID | WBS | Task | Duration | Start | Finish | Predecessors | Total slack | Free slack | Resources | Work |
| --- | --- | --- | --- | --- | --- | --- | --- | --- | --- | --- |
| 104 | 2.6.3.6 | **2.6.3.6 Módulo de FAQ** | 0.5d | 2017-08-03 09:00 | 2017-08-03 13:00 |  |  |  |  | 4h |
| 105 | 2.6.3.6.1 | 2.6.3.6.1 Controlador | 0.25d | 2017-08-03 09:00 | 2017-08-03 11:00 |  | 2.25d | 0d | Programador_LESV | 2h |
| 106 | 2.6.3.6.2 | 2.6.3.6.2 Vista/Interfaz | 0.25d | 2017-08-03 11:00 | 2017-08-03 13:00 | 105 | 2.25d | 0d | Programador_LESV | 2h |
| 107 | 2.6.4 | 2.6.4 Hitos de codificación | 0.25d | 2017-08-03 15:00 | 2017-08-03 17:00 | 106 | 2.25d |  | Programador_LESV; Admin de la configuración_SBH; Admin de proyecto_SBH; Asegurador de la calidad_LVA; Ing en V&V_LVA | 10h |
| 108 | 2.7 | **2.7 Pruebas** | 1d | 2017-08-08 09:00 | 2017-08-08 19:00 | 65 |  |  |  | 11.2h |
| 109 | 2.7.1 | **2.7.1 Caja blanca** | 1d | 2017-08-08 09:00 | 2017-08-08 19:00 |  |  |  |  | 7.2h |
| 110 | 2.7.1.1 | **2.7.1.1 Módulo de usuarios** | 0.2d | 2017-08-08 09:00 | 2017-08-08 10:36 |  |  |  |  | 1.6h |
| 111 | 2.7.1.1.1 | 2.7.1.1.1 Pruebas unitarias | 0.1d | 2017-08-08 09:00 | 2017-08-08 09:48 |  | 0.8d | 0d | Tester_LVA | 0.8h |
| 112 | 2.7.1.1.2 | 2.7.1.1.2 Pruebas de módulo | 0.1d | 2017-08-08 09:48 | 2017-08-08 10:36 | 111 | 0.8d |  | Tester_LVA | 0.8h |
| 113 | 2.7.1.2 | **2.7.1.2 Módulo de novedades** | 0.1d | 2017-08-08 09:00 | 2017-08-08 09:48 |  |  |  |  | 0.8h |
| 114 | 2.7.1.2.1 | 2.7.1.2.1 Pruebas unitarias | 0.05d | 2017-08-08 09:00 | 2017-08-08 09:24 |  | 0.9d | 0d | Tester_LVA | 0.4h |
| 115 | 2.7.1.2.2 | 2.7.1.2.2 Pruebas de módulo | 0.05d | 2017-08-08 09:24 | 2017-08-08 09:48 | 114 | 0.9d |  | Tester_LVA | 0.4h |
| 116 | 2.7.1.3 | **2.7.1.3 Módulo de productos** | 0.3d | 2017-08-08 09:00 | 2017-08-08 11:24 |  |  |  |  | 2.4h |
| 117 | 2.7.1.3.1 | 2.7.1.3.1 Pruebas unitarias | 0.15d | 2017-08-08 09:00 | 2017-08-08 10:12 |  | 0.7d | 0d | Tester_LVA | 1.2h |
| 118 | 2.7.1.3.2 | 2.7.1.3.2 Pruebas de moduo | 0.15d | 2017-08-08 10:12 | 2017-08-08 11:24 | 117 | 0.7d |  | Tester_LVA | 1.2h |
| 119 | 2.7.1.4 | **2.7.1.4 Módulo de compras** | 0.3d | 2017-08-08 09:00 | 2017-08-08 11:24 |  |  |  |  | 2.4h |
| 120 | 2.7.1.4.1 | 2.7.1.4.1 Pruebas unitarias | 0.15d | 2017-08-08 09:00 | 2017-08-08 10:12 |  | 0.6d | 0d | Tester_LVA | 1.2h |
| 121 | 2.7.1.4.2 | 2.7.1.4.2 Pruebas de módulo | 0.15d | 2017-08-08 10:12 | 2017-08-08 11:24 | 120 | 0.6d | 0d | Tester_LVA | 1.2h |
| 122 | 2.7.2 | 2.7.2 Hitos de pruebas | 0.1d | 2017-08-08 11:24 | 2017-08-08 12:12 | 121 | 0.6d |  | Tester_LVA; Admin de la configuración_SBH; Admin de proyecto_SBH; Asegurador de la calidad_LVA; Ing en V&V_LVA | 4h |
| 123 | 2.8 | **2.8 Intregración** | 1d | 2017-08-09 09:00 | 2017-08-09 19:00 | 108 |  |  |  | 32h |
| 124 | 2.8.1 | 2.8.1 Pruebas de integración | 0.5d | 2017-08-09 09:00 | 2017-08-09 13:00 |  | 0d |  | Programador_LESV; Tester_LVA | 8h |
| 125 | 2.8.2 | 2.8.2 Hitos de Integración | 0.5d | 2017-08-09 15:00 | 2017-08-09 19:00 | 124 | 0d |  | Programador_LESV; Tester_LVA; Admin de la configuración_SBH; Admin de proyecto_SBH; Asegurador de la calidad_LVA; Ing en V&V_LVA | 24h |
| 126 | 2.9 | **2.9 Implementación** | 1d | 2017-08-10 09:00 | 2017-08-10 19:00 | 123 |  |  |  | 12.8h |
| 127 | 2.9.1 | 2.9.1 Lista de hosting | 0.1d | 2017-08-10 09:00 | 2017-08-10 09:48 |  | 0d |  | Diseñador_LESV | 0.8h |
| 128 | 2.9.2 | 2.9.2 Evalucación de hosting | 0.1d | 2017-08-10 09:48 | 2017-08-10 10:36 | 127 | 0d |  | Admin de proyecto_SBH | 0.8h |
| 129 | 2.9.3 | 2.9.3 Montar el sitio en el hosting | 0.3d | 2017-08-10 10:36 | 2017-08-10 13:00 | 128 | 0d |  | Programador_LESV | 2.4h |
| 130 | 2.9.4 | 2.9.4 Pruebas de sistema | 0.3d | 2017-08-10 15:00 | 2017-08-10 17:24 | 129 | 0d |  | Tester_LVA | 2.4h |
| 131 | 2.9.5 | 2.9.5 Hitos de la implementación | 0.2d | 2017-08-10 17:24 | 2017-08-10 19:00 | 130 | 0d |  | Admin de proyecto_SBH; Asegurador de la calidad_LVA; Ing en V&V_LVA; Tester_LVA | 6.4h |

| ID | WBS | Task | Type | Duration | Start | Finish | Predecessors | Total slack | Free slack | Constraint | Resources | Work |
| --- | --- | --- | --- | --- | --- | --- | --- | --- | --- | --- | --- | --- |
| 132 | 2.10 | **2.10 Cierre del proyecto** |  | 1d | 2017-08-11 09:00 | 2017-08-11 19:00 | 126 |  |  |  |  | 11.2h |
| 133 | 2.10.1 | 2.10.1 Carta de aceptación |  | 0.1d | 2017-08-11 09:00 | 2017-08-11 09:48 |  | 0.2d | 0d |  | Admin de la configuración_SBH; Admin de proyecto_SBH; Asegurador de la calidad_LVA | 2.4h |
| 134 | 2.10.2 | 2.10.2 Acta de cierre de proyecto |  | 0.1d | 2017-08-11 09:48 | 2017-08-11 10:36 | 133 | 0.2d | 0d |  | Admin de la configuración_SBH; Admin de proyecto_SBH; Asegurador de la calidad_LVA | 2.4h |
| 135 | 2.10.3 | 2.10.3 Evaluación de desempeño |  | 0.3d | 2017-08-11 10:36 | 2017-08-11 13:00 | 134 | 0.2d | 0d |  | Admin de proyecto_SBH | 2.4h |
| 136 | 2.10.4 | 2.10.4 Junta de lecciones aprendidas |  | 0.2d | 2017-08-11 15:00 | 2017-08-11 16:36 | 135 | 0.2d | 0d |  | Admin de proyecto_SBH | 1.6h |
| 137 | 2.10.5 | 2.10.5 Revisión de adeherencias |  | 0.1d | 2017-08-11 16:36 | 2017-08-11 17:24 | 136 | 0.2d |  |  | Admin de proyecto_SBH | 0.8h |
| 138 | 2.10.6 | 2.10.6 Liberación de recursos |  | 0.1d | 2017-08-11 09:00 | 2017-08-11 09:48 |  | 0.8d | 0d |  | Admin de proyecto_SBH | 0.8h |
| 139 | 2.10.7 | **2.10.7 Informa final de (Cierre)** |  | 0.1d | 2017-08-11 09:48 | 2017-08-11 10:36 | 138 | 0.8d |  |  | Admin de proyecto_SBH | 0.8h |
| 143 | 2.10.7.1 | 1 | manual | 1d | 2017-05-26 09:00 | 2017-05-26 19:00 |  |  |  | start no earlier than 2017-05-26 09:00 |  |  |
| 144 | 2.10.7.2 | 2 | manual | 1d | 2017-06-02 09:00 | 2017-06-02 19:00 |  |  |  | start no earlier than 2017-06-02 09:00 |  |  |
| 145 | 2.10.7.3 | 3 | manual | 1d | 2017-06-09 09:00 | 2017-06-09 19:00 |  |  |  | start no earlier than 2017-06-09 09:00 |  |  |
| 146 | 2.10.7.4 | 4 | manual | 1d | 2017-06-16 09:00 | 2017-06-16 19:00 |  |  |  | start no earlier than 2017-06-16 09:00 |  |  |
| 147 | 2.10.7.5 | 5 | manual | 1d | 2017-06-23 09:00 | 2017-06-23 19:00 |  |  |  | start no earlier than 2017-06-23 09:00 |  |  |
| 148 | 2.10.7.6 | 6 | manual | 1d | 2017-06-30 09:00 | 2017-06-30 19:00 |  |  |  | start no earlier than 2017-06-30 09:00 |  |  |
| 149 | 2.10.7.7 | 7 | manual | 1d | 2017-07-07 09:00 | 2017-07-07 19:00 |  |  |  | start no earlier than 2017-07-07 09:00 |  |  |
| 150 | 2.10.7.8 | 8 | manual | 1d | 2017-07-14 09:00 | 2017-07-14 19:00 |  |  |  | start no earlier than 2017-07-14 09:00 |  |  |
| 151 | 2.10.7.9 | 9 | manual | 1d | 2017-07-21 09:00 | 2017-07-21 19:00 |  |  |  | start no earlier than 2017-07-21 09:00 |  |  |
| 152 | 2.10.7.10 | 10 | manual | 1d | 2017-07-28 09:00 | 2017-07-28 19:00 |  |  |  | start no earlier than 2017-07-28 09:00 |  |  |
| 153 | 2.10.7.11 | 11 | manual | 1d | 2017-08-04 09:00 | 2017-08-04 19:00 |  |  |  | start no earlier than 2017-08-04 09:00 |  |  |
